# Recursos

How a schedule from MS Project changed from version to version. A marks actual dates.

## Version 1 (saved 2024-09-16, file RecursosBackUp16_09.mpp)

| ID | Task | Duration | Start | Finish | Total float |
| --- | --- | --- | --- | --- | --- |
| 1 | Elaborar ERS | 1d? | 2021-11-02 | 2021-11-02 | 4d |
| 2 | Elaborar Doc. Usuario v1 | 1d? | 2021-11-02 | 2021-11-02 | 4d |
| 3 | Peer Review de Requisitos | 16h | 2021-11-02 | 2021-11-03 | 3d |
| 4 | Elaborar Arquitectura (diseño de alto nivel) | 1d? | 2021-11-02 | 2021-11-02 | 4d |
| 5 | Diseño BBDD (diseño alto nivel) | 1d? | 2021-11-02 | 2021-11-02 | 4d |
| 6 | Detalle Componentes (diseño bajo nivel) | 1d? | 2021-11-02 | 2021-11-02 | 4d |
| 7 | Revisión Técnica del Diseño Software (RDS) | 16h | 2021-11-02 | 2021-11-03 | 3d |
| 8 | Elaborar Doc. Usuario v2 | 1d? | 2021-11-02 | 2021-11-02 | 4d |
| 9 | Implementar BBDD | 40h | 2021-11-02 | 2021-11-08 | 0d |
| 10 | Implementar Unidades | 1d? | 2021-11-02 | 2021-11-02 | 4d |
| 11 | Documentar Unidades | 1d? | 2021-11-02 | 2021-11-02 | 4d |
| 12 | Ejecutar Pruebas de Unidad | 1d? | 2021-11-02 | 2021-11-02 | 4d |
| 13 | Elaborar Plan Pruebas Aceptación | 1d? | 2021-11-02 | 2021-11-02 | 4d |
| 14 | Ejecutar Plan Pruebas Aceptación | 24h | 2021-11-02 | 2021-11-04 | 2d |
| 15 | Elaborar Plan Pruebas Sistema | 1d? | 2021-11-02 | 2021-11-02 | 4d |
| 16 | Ejecutar Plan Pruebas Sistema | 1d? | 2021-11-02 | 2021-11-02 | 4d |
| 17 | Elaborar Plan Pruebas Integración | 1d? | 2021-11-02 | 2021-11-02 | 4d |
| 18 | Ejecutar Plan Pruebas Integración | 1d? | 2021-11-02 | 2021-11-02 | 4d |
| 19 | Test de Usabilidad | 8h | 2021-11-02 | 2021-11-02 | 4d |
| 20 | Preparar Paquete de Instalación | 24h | 2021-11-02 | 2021-11-04 | 2d |
| 21 | Elaborar Doc. Usuario v3 | 1d? | 2021-11-02 | 2021-11-02 | 4d |
| 22 | Elaborar Plan Instalación & Formación | 1d? | 2021-11-02 | 2021-11-02 | 4d |
| 23 | Instalación en Cliente | 1d? | 2021-11-02 | 2021-11-02 | 4d |
| 24 | Formación | 16h | 2021-11-02 | 2021-11-03 | 3d |

## Version 2 (saved 2024-09-24, file RecursosBackUp24_09Relaciones.mpp)

Last finish 2021-11-08 → 2022-01-03 (+56d).

Changed:

| ID | Task | Start | Finish | Duration | Total float | Predecessors | Other |
| --- | --- | --- | --- | --- | --- | --- | --- |
| 1 | Elaborar ERS |  | 2021-11-02 → 2021-11-10 (+8d) | 1d? → 6.25d? | 4d → 0d |  | resources none → A1; A2 |
| 2 | Elaborar Doc. Usuario v1 | 2021-11-02 → 2021-11-04 (+2d) | 2021-11-02 → 2021-11-10 (+8d) | 1d? → 3.75d? | 4d → 0d | none → 1FF | resources none → A1; A2 |
| 3 | Peer Review de Requisitos | 2021-11-02 → 2021-11-10 (+8d) | 2021-11-03 → 2021-11-12 (+9d) |  | 3d → 0d | none → 1, 2 | resources none → A1; A2 |
| 4 | Elaborar Arquitectura (diseño de alto nivel) | 2021-11-02 → 2021-11-12 (+10d) | 2021-11-02 → 2021-11-19 (+17d) | 1d? → 5d? | 4d → 0d | none → 3 | resources none → D1; D2 |
| 5 | Diseño BBDD (diseño alto nivel) | 2021-11-02 → 2021-11-12 (+10d) | 2021-11-02 → 2021-11-19 (+17d) | 1d? → 5d? | 4d → 0d | none → 3 | resources none → D1; D2 |
| 6 | Detalle Componentes (diseño bajo nivel) | 2021-11-02 → 2021-11-16 (+14d) | 2021-11-02 → 2021-11-30 (+28d) | 1d? → 10d? | 4d → 0d | none → 5SS+4%, 4SS+4% | resources none → D1; D2 |
| 7 | Revisión Técnica del Diseño Software (RDS) | 2021-11-02 → 2021-11-30 (+28d) | 2021-11-03 → 2021-12-02 (+29d) |  | 3d → 0d | none → 5, 4, 6 | resources none → D1; D2 |
| 8 | Elaborar Doc. Usuario v2 | 2021-11-02 → 2021-12-02 (+30d) | 2021-11-02 → 2021-12-06 (+34d) | 1d? → 2d? | 4d → 0d | none → 7 | resources none → D1; D2 |
| 9 | Implementar BBDD | 2021-11-02 → 2021-12-06 (+34d) | 2021-11-08 → 2021-12-13 (+35d) |  | 0d → 14.79d | none → 8 | resources none → DS2; DS3; DS1 |
| 10 | Implementar Unidades | 2021-11-02 → 2021-12-06 (+34d) | 2021-11-02 → 2021-12-14 (+42d) | 1d? → 6.67d? | 4d → 0d | none → 8 | resources none → DS4; DS5; DS2 |
| 11 | Documentar Unidades | 2021-11-02 → 2021-12-10 (+38d) | 2021-11-02 → 2021-12-14 (+42d) | 1d? → 2.67d? | 4d → 0d | none → 8, 10FF | resources none → DS4; DS5; DS2 |
| 12 | Ejecutar Pruebas de Unidad | 2021-11-02 → 2021-12-08 (+36d) | 2021-11-02 → 2021-12-14 (+42d) | 1d? → 4d? | 4d → 0d | none → 8, 10FF, 11FF | resources none → DS4; DS5; DS2 |
| 13 | Elaborar Plan Pruebas Aceptación | 2021-11-02 → 2021-11-09 (+7d) | 2021-11-02 → 2021-11-12 (+10d) | 1d? → 3d? | 4d → 35.79d | none → 3FF, 1SS+2% | resources none → T1; T2 |
| 14 | Ejecutar Plan Pruebas Aceptación | 2021-11-02 → 2021-12-24 (+52d) | 2021-11-04 → 2021-12-29 (+55d) |  | 2d → 0d | none → 16 | resources none → T1; T2 |
| 15 | Elaborar Plan Pruebas Sistema | 2021-11-02 → 2021-11-16 (+14d) | 2021-11-02 → 2021-11-19 (+17d) | 1d? → 3d? | 4d → 30.79d | none → 5FF, 4SS+2% | resources none → T1; T2 |
| 16 | Ejecutar Plan Pruebas Sistema | 2021-11-02 → 2021-12-22 (+50d) | 2021-11-02 → 2021-12-24 (+52d) | 1d? → 1.88d? | 4d → 0d | none → 20 | resources none → T1; T2 |
| 17 | Elaborar Plan Pruebas Integración | 2021-11-02 → 2021-11-23 (+21d) | 2021-11-02 → 2021-11-30 (+28d) | 1d? → 4.5d? | 4d → 23.79d | none → 6FF | resources none → T1; T2 |
| 18 | Ejecutar Plan Pruebas Integración | 2021-11-02 → 2021-12-14 (+42d) | 2021-11-02 → 2021-12-17 (+45d) | 1d? → 2.5d? | 4d → 0d | none → 12 | resources none → T1; T2 |
| 19 | Test de Usabilidad | 2021-11-02 → 2021-12-22 (+50d) | 2021-11-02 → 2021-12-23 (+51d) |  | 4d → 3.62d | none → 20 | resources none → T1; T2 |
| 20 | Preparar Paquete de Instalación | 2021-11-02 → 2021-12-17 (+45d) | 2021-11-04 → 2021-12-22 (+48d) |  | 2d → 0d | none → 18 | resources none → DS1; DS2 |
| 21 | Elaborar Doc. Usuario v3 | 2021-11-02 → 2021-12-24 (+52d) | 2021-11-02 → 2021-12-29 (+57d) | 1d? → 3d? | 4d → 2.75d | none → 19, 16 | resources none → DS1 |
| 22 | Elaborar Plan Instalación & Formación | 2021-11-02 → 2021-12-29 (+57d) | 2021-11-02 → 2021-12-30 (+58d) | 1d? → 0.75d? | 4d → 0d | none → 14 | resources none → DS1; A2; D2; T1 |
| 23 | Instalación en Cliente | 2021-11-02 → 2021-12-30 (+58d) | 2021-11-02 → 2021-12-31 (+59d) | 1d? → 1.5d? | 4d → 0.5d | none → 22 | resources none → DS3; DS4; DS5; DS1; DS2 |
| 24 | Formación | 2021-11-02 → 2021-12-30 (+58d) | 2021-11-03 → 2022-01-03 (+61d) |  | 3d → 0d | none → 22 | resources none → A2; D2; T1; DS1 |

## Version 3 (saved 2024-09-25, file Recursos.mpp)

Last finish stays 2022-01-03.

Changed:

| ID | Task | Other |
| --- | --- | --- |
| 9 | Implementar BBDD | resources DS2; DS3; DS1 → DS2; DS3 |

## Version 4 (saved 2024-09-26, file RecursosPeriodica.mpp)

Last finish stays 2022-01-03.

Added:

| ID | Task | Duration | Start | Finish | Constraint |
| --- | --- | --- | --- | --- | --- |
| 9 | **Supervisión periódica Desarrollo** | 25.5d | 2021-11-05 | 2021-12-10 |  |
| 10 | Supervisión periódica Desarrollo 1 | 4h | 2021-11-05 | 2021-11-05 | start no earlier than 2021-11-05 |
| 11 | Supervisión periódica Desarrollo 2 | 4h | 2021-11-12 | 2021-11-12 | start no earlier than 2021-11-12 |
| 12 | Supervisión periódica Desarrollo 3 | 4h | 2021-11-19 | 2021-11-19 | start no earlier than 2021-11-19 |
| 13 | Supervisión periódica Desarrollo 4 | 4h | 2021-11-26 | 2021-11-26 | start no earlier than 2021-11-26 |
| 14 | Supervisión periódica Desarrollo 5 | 4h | 2021-12-03 | 2021-12-03 | start no earlier than 2021-12-03 |
| 15 | Supervisión periódica Desarrollo 6 | 4h | 2021-12-10 | 2021-12-10 | start no earlier than 2021-12-10 |

## Version 5 (saved 2024-09-26, file RecursosContinuaNoAcabada.mpp)

Last finish stays 2022-01-03.

Removed: 9 Supervisión periódica Desarrollo; 12 Supervisión periódica Desarrollo 3; 13 Supervisión periódica Desarrollo 4; 14 Supervisión periódica Desarrollo 5; 15 Supervisión periódica Desarrollo 6

Changed:

| ID | Task | Start | Finish | Duration | Total float | Predecessors | Other |
| --- | --- | --- | --- | --- | --- | --- | --- |
| 2 | h1 | 2021-11-12 → 2021-11-10 (-2d) | 2021-11-12 → 2021-11-10 (-2d) | 4h → 0d | 35.54d → 0d | none → 1 | was named Supervisión periódica Desarrollo 2; constraint start no earlier than 2021-11-12 → none |
| 3 | Elaborar Doc. Usuario v1 |  |  |  |  | 1FF → 1SS+1.5%, 2FF |  |
| 4 | Peer Review de Requisitos |  |  |  |  | 1, 3 → 3 |  |
| 10 | **Supervición Continua Desarrollo** | 2021-11-05 → 2021-12-06 (+31d) | 2021-11-05 → 2021-12-14 (+39d) | 4h → 6.67d? | 40.54d → 0d |  | was named Supervisión periódica Desarrollo 1; constraint start no earlier than 2021-11-05 → none; resources none → DS1 [25%] |

## Version 6 (saved 2024-10-02, file RecursosContinuaBackUpFinSemana2.mpp)

Last finish 2022-01-03 → 2022-01-05 (+2d).

Added:

| ID | Task | Duration | Start | Finish | Resources |
| --- | --- | --- | --- | --- | --- |
| 1 | **Supervision Experto** | 6.25d? | 2021-11-02 | 2021-11-10 | Experto |

Changed:

| ID | Task | Start | Finish | Total float | Predecessors |
| --- | --- | --- | --- | --- | --- |
| 8 | Detalle Componentes (diseño bajo nivel) | 2021-11-16 → 2021-11-15 (-1d) | 2021-11-30 → 2021-11-29 (-1d) |  | 7SS+4%, 6SS+4% → 7SS+2%, 6SS+2% |
| 9 | Revisión Técnica del Diseño Software (RDS) | 2021-11-30 → 2021-11-29 (-1d) | 2021-12-02 → 2021-12-01 (-1d) |  |  |
| 10 | Elaborar Doc. Usuario v2 | 2021-12-02 → 2021-12-01 (-1d) | 2021-12-06 → 2021-12-03 (-3d) |  |  |
| 11 | **Supervición Continua Desarrollo** | 2021-12-06 → 2021-12-03 (-3d) | 2021-12-14 → 2021-12-13 (-1d) |  |  |
| 12 | Implementar BBDD | 2021-12-06 → 2021-12-03 (-3d) | 2021-12-13 → 2021-12-10 (-3d) | 14.79d → 17.79d |  |
| 13 | Implementar Unidades | 2021-12-06 → 2021-12-03 (-3d) | 2021-12-14 → 2021-12-13 (-1d) |  |  |
| 14 | Documentar Unidades | 2021-12-10 → 2021-12-09 (-1d) | 2021-12-14 → 2021-12-13 (-1d) |  |  |
| 15 | Ejecutar Pruebas de Unidad | 2021-12-08 → 2021-12-07 (-1d) | 2021-12-14 → 2021-12-13 (-1d) |  |  |
| 18 | Ejecutar Plan Pruebas Sistema | 2021-12-22 → 2021-12-21 (-1d) | 2021-12-24 → 2021-12-23 (-1d) |  |  |
| 19 | Elaborar Plan Pruebas Integración | 2021-11-23 → 2021-11-22 (-1d) | 2021-11-30 → 2021-11-29 (-1d) | 23.79d → 26.79d |  |
| 20 | Ejecutar Plan Pruebas Integración | 2021-12-14 → 2021-12-13 (-1d) | 2021-12-17 → 2021-12-16 (-1d) |  |  |
| 21 | Test de Usabilidad | 2021-12-22 → 2021-12-21 (-1d) | 2021-12-23 → 2021-12-22 (-1d) | 3.62d → 0.88d |  |
| 22 | Preparar Paquete de Instalación | 2021-12-17 → 2021-12-16 (-1d) | 2021-12-22 → 2021-12-21 (-1d) |  |  |
| 23 | Elaborar Doc. Usuario v3 | 2021-12-24 → 2021-12-23 (-1d) | 2021-12-29 → 2021-12-28 (-1d) | 2.75d → 0d |  |
| 24 | Ejecutar Plan Pruebas Aceptación | 2021-12-24 → 2021-12-28 (+4d) | 2021-12-29 → 2021-12-31 (+2d) |  | 18 → 18, 23 |
| 25 | Elaborar Plan Instalación & Formación | 2021-12-29 → 2021-12-31 (+2d) | 2021-12-30 → 2022-01-03 (+4d) |  |  |
| 26 | Instalación en Cliente | 2021-12-30 → 2022-01-03 (+4d) | 2021-12-31 → 2022-01-04 (+4d) |  |  |
| 27 | Formación | 2021-12-30 → 2022-01-03 (+4d) | 2022-01-03 → 2022-01-05 (+2d) |  |  |

## Version 7 (saved 2024-10-09, file RecursosContinuaBackUp09_10.mpp)

Last finish 2022-01-05 → 2022-01-14 (+9d).

Added:

| ID | Task | Duration | Start | Finish | Predecessors | Resources |
| --- | --- | --- | --- | --- | --- | --- |
| 1 | **Adquisición** | 15.68d? | 2021-11-02 | 2021-11-23 |  |  |
| 2 | Pedir Presupuestos | 0.63d? | 2021-11-02 | 2021-11-02 |  | DS1; D1; D2 |
| 3 | Analisis Presupuestos | 0.5d | 2021-11-11 | 2021-11-12 | 2FS+7d | D1; DS1 |
| 4 | Tramitar Compra | 0d? | 2021-11-12 | 2021-11-12 | 3 | Equipos Nuevos |
| 5 | Comenzar Instalacion | 0d | 2021-11-17 | 2021-11-17 | 4FS+3d |  |
| 6 | Finalizar Instalación | 0d | 2021-11-23 | 2021-11-23 | 5FS+4d |  |
| 7 | Revisar Instalación | 0.55d? | 2021-11-23 | 2021-11-23 | 6 | D1; D2; DS1; Equipos Nuevos [0.1%] |

Changed:

| ID | Task | Start | Finish | Predecessors | Other |
| --- | --- | --- | --- | --- | --- |
| 11 | Elaborar Arquitectura (diseño de alto nivel) | 2021-11-12 → 2021-11-23 (+11d) | 2021-11-19 → 2021-11-30 (+11d) | 33 → 33, 7 |  |
| 12 | Detalle Componentes (diseño bajo nivel) | 2021-11-15 → 2021-11-24 (+9d) | 2021-11-29 → 2021-12-08 (+9d) |  |  |
| 13 | Revisión Técnica del Diseño Software (RDS) | 2021-11-29 → 2021-12-08 (+9d) | 2021-12-01 → 2021-12-10 (+9d) |  |  |
| 14 | Elaborar Doc. Usuario v2 | 2021-12-01 → 2021-12-10 (+9d) | 2021-12-03 → 2021-12-14 (+11d) |  |  |
| 15 | **Supervisión Continua Desarrollo** | 2021-12-03 → 2021-12-14 (+11d) | 2021-12-13 → 2021-12-23 (+10d) |  | was named Supervición Continua Desarrollo |
| 16 | Implementar BBDD | 2021-12-03 → 2021-12-14 (+11d) | 2021-12-10 → 2021-12-21 (+11d) |  |  |
| 17 | Implementar Unidades | 2021-12-03 → 2021-12-14 (+11d) | 2021-12-13 → 2021-12-23 (+10d) |  |  |
| 18 | Documentar Unidades | 2021-12-09 → 2021-12-20 (+11d) | 2021-12-13 → 2021-12-23 (+10d) |  |  |
| 19 | Ejecutar Pruebas de Unidad | 2021-12-07 → 2021-12-17 (+10d) | 2021-12-13 → 2021-12-23 (+10d) |  |  |
| 20 | Elaborar Plan Pruebas Sistema | 2021-11-16 → 2021-11-25 (+9d) | 2021-11-19 → 2021-11-30 (+11d) |  |  |
| 21 | Ejecutar Plan Pruebas Sistema | 2021-12-21 → 2021-12-30 (+9d) | 2021-12-23 → 2022-01-03 (+11d) |  |  |
| 22 | Elaborar Plan Pruebas Integración | 2021-11-22 → 2021-12-02 (+10d) | 2021-11-29 → 2021-12-08 (+9d) |  |  |
| 23 | Ejecutar Plan Pruebas Integración | 2021-12-13 → 2021-12-23 (+10d) | 2021-12-16 → 2021-12-27 (+11d) |  |  |
| 24 | Test de Usabilidad | 2021-12-21 → 2021-12-30 (+9d) | 2021-12-22 → 2021-12-31 (+9d) |  |  |
| 25 | Preparar Paquete de Instalación | 2021-12-16 → 2021-12-27 (+11d) | 2021-12-21 → 2021-12-30 (+9d) |  |  |
| 26 | Elaborar Doc. Usuario v3 | 2021-12-23 → 2022-01-03 (+11d) | 2021-12-28 → 2022-01-06 (+9d) |  |  |
| 27 | Ejecutar Plan Pruebas Aceptación | 2021-12-28 → 2022-01-06 (+9d) | 2021-12-31 → 2022-01-11 (+11d) |  |  |
| 28 | Elaborar Plan Instalación & Formación | 2021-12-31 → 2022-01-11 (+11d) | 2022-01-03 → 2022-01-12 (+9d) |  |  |
| 29 | Instalación en Cliente | 2022-01-03 → 2022-01-12 (+9d) | 2022-01-04 → 2022-01-13 (+9d) |  | resources DS3; DS4; DS5; DS1; DS2 → DS3; DS4; DS5; DS1; DS2; Dietas [62.5%] |
| 30 | Formación | 2022-01-03 → 2022-01-12 (+9d) | 2022-01-05 → 2022-01-14 (+9d) |  |  |
| 34 | Diseño BBDD (diseño alto nivel) | 2021-11-12 → 2021-11-23 (+11d) | 2021-11-19 → 2021-11-30 (+11d) | 33 → 33, 7 |  |

## Version 8 (saved 2024-10-10, file RecursosContinuaNivelacionSOLOERS.mpp)

Last finish stays 2022-01-14.

Added:

| ID | Task | Duration | Start | Finish | Predecessors | Resources |
| --- | --- | --- | --- | --- | --- | --- |
| 10 | Elaborar ERS2 | 8.33d? | 2021-11-03 | 2021-11-15 | 9 | A1 [60%]; A2 [60%] |

Removed: 32 h1

Changed:

| ID | Task | Start | Finish | Duration | Total float | Predecessors | Other |
| --- | --- | --- | --- | --- | --- | --- | --- |
| 8 | **Supervision Experto** |  | 2021-11-10 → 2021-11-16 (+6d) | 6.25d? → 10.62d? | 7.43d → 3.05d |  |  |
| 9 | Elaborar ERS1 |  | 2021-11-10 → 2021-11-03 (-7d) | 6.25d? → 1.25d? | 7.43d → 3.05d |  | was named Elaborar ERS |
| 11 | Elaborar Doc. Usuario v1 | 2021-11-04 → 2021-11-03 (-1d) | 2021-11-10 → 2021-11-16 (+6d) | 3.75d? → 9.38d? | 7.43d → 3.05d | 9SS+1.5%, h1FF → 9, 10FF | resources A1; A2 → A1 [40%]; A2 [40%] |
| 17 | Implementar BBDD |  | 2021-12-21 → 2021-12-17 (-4d) | 40h → 2.5d? | 17.79d → 20.29d |  |  |
| 32 | Elaborar Plan Pruebas Aceptación | 2021-11-09 → 2021-11-15 (+6d) | 2021-11-12 → 2021-11-18 (+6d) |  | 45.22d → 40.84d | 33FF, 9SS+2% → 33FF, 9 |  |
| 33 | Peer Review de Requisitos | 2021-11-10 → 2021-11-16 (+6d) | 2021-11-12 → 2021-11-18 (+6d) |  | 7.43d → 3.05d |  |  |

## Version 9 (saved 2024-10-10, file RecursosPuntual.mpp)

Last finish 2022-01-14 → 2021-12-29 (-16d).

Added:

| ID | Task | Duration | Start | Finish | Predecessors | Resources |
| --- | --- | --- | --- | --- | --- | --- |
| 11 | Supervision Mitad Desarrollo | 1d? | 2021-12-09 | 2021-12-10 | 10SS+5%, 9SS+5%, 12SS+5%, 13SS+5% | DS1 |

Removed: 1 Adquisición; 2 Pedir Presupuestos; 3 Analisis Presupuestos; 4 Tramitar Compra; 5 Comenzar Instalacion; 6 Finalizar Instalación; 7 Revisar Instalación; 8 Supervision Experto; 10 Elaborar ERS2; 16 Supervisión Continua Desarrollo

Changed:

| ID | Task | Start | Finish | Duration | Total float | Predecessors | Other |
| --- | --- | --- | --- | --- | --- | --- | --- |
| 1 | Elaborar ERS |  | 2021-11-03 → 2021-11-10 (+7d) | 1.25d? → 6.25d? | 3.05d → 0d |  | was named Elaborar ERS1 |
| 2 | Elaborar Doc. Usuario v1 | 2021-11-03 → 2021-11-04 (+1d) | 2021-11-16 → 2021-11-10 (-6d) | 9.38d? → 3.75d? | 3.05d → 0d | 1, Elaborar ERS2FF → 1FF | resources A1 [40%]; A2 [40%] → A1; A2 |
| 3 | Peer Review de Requisitos | 2021-11-16 → 2021-11-10 (-6d) | 2021-11-18 → 2021-11-12 (-6d) |  | 3.05d → 0d |  |  |
| 4 | Elaborar Arquitectura (diseño de alto nivel) | 2021-11-23 → 2021-11-12 (-11d) | 2021-11-30 → 2021-11-19 (-11d) |  |  | 3, Revisar Instalación → 3 |  |
| 5 | Diseño BBDD (diseño alto nivel) | 2021-11-23 → 2021-11-12 (-11d) | 2021-11-30 → 2021-11-19 (-11d) |  |  | 3, Revisar Instalación → 3 |  |
| 6 | Detalle Componentes (diseño bajo nivel) | 2021-11-24 → 2021-11-16 (-8d) | 2021-12-08 → 2021-11-30 (-8d) |  |  | 5SS+2%, 4SS+2% → 5SS+4%, 4SS+4% |  |
| 7 | Revisión Técnica del Diseño Software (RDS) | 2021-12-08 → 2021-11-30 (-8d) | 2021-12-10 → 2021-12-02 (-8d) |  |  |  |  |
| 8 | Elaborar Doc. Usuario v2 | 2021-12-10 → 2021-12-02 (-8d) | 2021-12-14 → 2021-12-06 (-8d) |  |  |  |  |
| 9 | Implementar BBDD | 2021-12-14 → 2021-12-06 (-8d) | 2021-12-17 → 2021-12-13 (-4d) | 2.5d? → 40h | 20.29d → 12.12d |  |  |
| 10 | Implementar Unidades | 2021-12-14 → 2021-12-06 (-8d) | 2021-12-23 → 2021-12-14 (-9d) |  | 0d → 10.46d |  |  |
| 12 | Documentar Unidades | 2021-12-20 → 2021-12-06 (-14d) | 2021-12-23 → 2021-12-08 (-15d) |  | 0d → 1.33d | 8, 10FF → 8 |  |
| 13 | Ejecutar Pruebas de Unidad | 2021-12-17 → 2021-12-06 (-11d) | 2021-12-23 → 2021-12-10 (-13d) |  |  | 8, 10FF, 12FF → 8, 12FF |  |
| 14 | Elaborar Plan Pruebas Aceptación | 2021-11-15 → 2021-11-09 (-6d) | 2021-11-18 → 2021-11-12 (-6d) |  | 40.84d → 33.12d | 3FF, 1 → 3FF, 1SS+2% |  |
| 15 | Ejecutar Plan Pruebas Aceptación | 2022-01-06 → 2021-12-21 (-16d) | 2022-01-11 → 2021-12-24 (-18d) |  |  | 17, 22 → 17 |  |
| 16 | Elaborar Plan Pruebas Sistema | 2021-11-25 → 2021-11-16 (-9d) | 2021-11-30 → 2021-11-19 (-11d) |  | 32.79d → 28.12d |  |  |
| 17 | Ejecutar Plan Pruebas Sistema | 2021-12-30 → 2021-12-17 (-13d) | 2022-01-03 → 2021-12-21 (-13d) |  |  |  |  |
| 18 | Elaborar Plan Pruebas Integración | 2021-12-02 → 2021-11-23 (-9d) | 2021-12-08 → 2021-11-30 (-8d) |  | 26.79d → 21.12d |  |  |
| 19 | Ejecutar Plan Pruebas Integración | 2021-12-23 → 2021-12-10 (-13d) | 2021-12-27 → 2021-12-14 (-13d) |  |  |  |  |
| 20 | Test de Usabilidad | 2021-12-30 → 2021-12-17 (-13d) | 2021-12-31 → 2021-12-20 (-11d) |  | 0.88d → 3.62d |  |  |
| 21 | Preparar Paquete de Instalación | 2021-12-27 → 2021-12-14 (-13d) | 2021-12-30 → 2021-12-17 (-13d) |  |  |  |  |
| 22 | Elaborar Doc. Usuario v3 | 2022-01-03 → 2021-12-21 (-13d) | 2022-01-06 → 2021-12-24 (-13d) |  | 0d → 2.75d |  |  |
| 23 | Elaborar Plan Instalación & Formación | 2022-01-11 → 2021-12-24 (-18d) | 2022-01-12 → 2021-12-27 (-16d) |  |  |  |  |
| 24 | Instalación en Cliente | 2022-01-12 → 2021-12-27 (-16d) | 2022-01-13 → 2021-12-28 (-16d) |  |  |  | resources DS3; DS4; DS5; DS1; DS2; Dietas [62.5%] → DS3; DS4; DS5; DS1; DS2 |
| 25 | Formación | 2022-01-12 → 2021-12-27 (-16d) | 2022-01-14 → 2021-12-29 (-16d) |  |  |  |  |

## Version 10 (saved 2024-10-10, file RecursosContinuaBackUp10_10.mpp)

Last finish 2021-12-29 → 2022-02-07 (+40d).

Added:

| ID | Task | Duration | Start | Finish | Predecessors | Resources |
| --- | --- | --- | --- | --- | --- | --- |
| 1 | **Adquisición** | 15.68d? | 2021-11-02 | 2021-11-23 |  |  |
| 2 | Pedir Presupuestos | 0.63d? | 2021-11-02 | 2021-11-02 |  | DS1; D1; D2 |
| 3 | Analisis Presupuestos | 0.5d | 2021-11-11 | 2021-11-12 | 2FS+7d | D1; DS1 |
| 4 | Tramitar Compra | 0d? | 2021-11-12 | 2021-11-12 | 3 | Equipos Nuevos |
| 5 | Comenzar Instalacion | 0d | 2021-11-17 | 2021-11-17 | 4FS+3d |  |
| 6 | Finalizar Instalación | 0d | 2021-11-23 | 2021-11-23 | 5FS+4d |  |
| 7 | Revisar Instalación | 0.55d? | 2021-11-23 | 2021-11-23 | 6 | D1; D2; DS1; Equipos Nuevos [0.1%] |
| 8 | **Supervision Experto** | 10.62d? | 2021-11-02 | 2021-11-16 |  | Experto |
| 10 | Elaborar ERS2 | 8.33d? | 2021-11-03 | 2021-11-15 | 9 | A1 [60%]; A2 [60%] |
| 16 | **Supervisión Continua Desarrollo** | 11.25d? | 2021-12-27 | 2022-01-11 |  | DS1 [25%] |
| 18 | Implementar Unidades 1 | 11.25d? | 2021-12-27 | 2022-01-11 | 15 | DS4 [50%]; DS5 [50%] |
| 20 | Documentar Unidades 1 | 11.25d? | 2021-12-27 | 2022-01-11 | 15, 18FF | DS4 [20%]; DS5 [20%] |
| 22 | Ejecutar Pruebas de Unidad 1 | 11.25d? | 2021-12-27 | 2022-01-11 | 15, 18FF, 20FF | DS4 [30%]; DS5 [30%] |
| 26 | Ejecutar Plan Purebas Sistema 2 | 0.88d? | 2022-01-21 | 2022-01-24 | 25 | T1; T2 |

Removed: 11 Supervision Mitad Desarrollo

Changed:

| ID | Task | Start | Finish | Duration | Total float | Predecessors | Other |
| --- | --- | --- | --- | --- | --- | --- | --- |
| 9 | Elaborar ERS1 |  | 2021-11-10 → 2021-11-03 (-7d) | 6.25d? → 1.25d? | 0d → 3.05d |  | was named Elaborar ERS |
| 11 | Elaborar Doc. Usuario v1 | 2021-11-04 → 2021-11-03 (-1d) | 2021-11-10 → 2021-11-16 (+6d) | 3.75d? → 9.38d? | 0d → 3.05d | 9FF → 9, 10FF | resources A1; A2 → A1 [40%]; A2 [40%] |
| 12 | Elaborar Arquitectura (diseño de alto nivel) | 2021-11-12 → 2021-11-23 (+11d) | 2021-11-19 → 2021-11-30 (+11d) |  |  | 37 → 37, 7, 36 |  |
| 13 | Detalle Componentes (diseño bajo nivel) | 2021-11-16 → 2021-12-07 (+21d) | 2021-11-30 → 2021-12-21 (+21d) |  |  | 38SS+4%, 12SS+4% → 38, 12 |  |
| 14 | Revisión Técnica del Diseño Software (RDS) | 2021-11-30 → 2021-12-21 (+21d) | 2021-12-02 → 2021-12-23 (+21d) |  |  |  |  |
| 15 | Elaborar Doc. Usuario v2 | 2021-12-02 → 2021-12-23 (+21d) | 2021-12-06 → 2021-12-27 (+21d) |  |  |  |  |
| 17 | Implementar BBDD | 2021-12-06 → 2021-12-27 (+21d) | 2021-12-13 → 2021-12-30 (+17d) | 40h → 2.5d? | 12.12d → 0d |  |  |
| 19 | Implementar Unidades 2 | 2021-12-06 → 2021-12-30 (+24d) | 2021-12-14 → 2022-01-11 (+28d) | 6.67d? → 8.75d? | 10.46d → 0d | 15 → 17 | was named Implementar Unidades; resources DS4; DS5; DS2 → DS2 [50%]; DS3 [50%] |
| 21 | Documentar Unidades 2 | 2021-12-06 → 2021-12-30 (+24d) | 2021-12-08 → 2022-01-11 (+34d) | 2.67d? → 8.75d? | 1.33d → 0d | 15 → 19FF, 17 | was named Documentar Unidades; resources DS4; DS5; DS2 → DS2 [20%]; DS3 [20%] |
| 23 | Ejecutar Pruebas de Unidad 2 | 2021-12-06 → 2021-12-30 (+24d) | 2021-12-10 → 2022-01-11 (+32d) | 4d? → 8.75d? |  | 15, 21FF → 19FF, 21FF, 17 | was named Ejecutar Pruebas de Unidad; resources DS4; DS5; DS2 → DS2 [30%]; DS3 [30%] |
| 24 | Elaborar Plan Pruebas Sistema | 2021-11-16 → 2021-12-02 (+16d) | 2021-11-19 → 2021-12-07 (+18d) |  | 28.12d → 43.38d |  |  |
| 25 | Ejecutar Plan Pruebas Sistema | 2021-12-17 → 2022-01-19 (+33d) | 2021-12-21 → 2022-01-21 (+31d) | 1.88d? → 2d? |  |  | resources T1; T2 → T1 [50%]; T2 [50%] |
| 27 | Elaborar Plan Pruebas Integración | 2021-11-23 → 2021-12-15 (+22d) | 2021-11-30 → 2021-12-21 (+21d) |  | 21.12d → 33.38d |  |  |
| 28 | Ejecutar Plan Pruebas Integración | 2021-12-10 → 2022-01-11 (+32d) | 2021-12-14 → 2022-01-14 (+31d) |  |  | 23 → 23, 22 |  |
| 29 | Test de Usabilidad | 2021-12-17 → 2022-01-19 (+33d) | 2021-12-20 → 2022-01-20 (+31d) |  | 3.62d → 1.88d |  | resources T1; T2 → T1 [50%]; T2 [50%] |
| 30 | Preparar Paquete de Instalación | 2021-12-14 → 2022-01-14 (+31d) | 2021-12-17 → 2022-01-19 (+33d) |  |  |  |  |
| 31 | Elaborar Doc. Usuario v3 | 2021-12-21 → 2022-01-24 (+34d) | 2021-12-24 → 2022-01-27 (+34d) |  | 2.75d → 0d | 29, 25 → 29, 26 |  |
| 32 | Ejecutar Plan Pruebas Aceptación | 2021-12-21 → 2022-01-27 (+37d) | 2021-12-24 → 2022-02-01 (+39d) |  |  | 25 → 31, 26 |  |
| 33 | Elaborar Plan Instalación & Formación | 2021-12-24 → 2022-02-01 (+39d) | 2021-12-27 → 2022-02-02 (+37d) |  |  |  |  |
| 34 | Instalación en Cliente | 2021-12-27 → 2022-02-02 (+37d) | 2021-12-28 → 2022-02-07 (+41d) | 1.5d? → 3d? | 0.5d → 0d |  | resources DS3; DS4; DS5; DS1; DS2 → DS3; DS4; DS5; DS1 [50%]; DS2; Dietas [62.5%] |
| 35 | Formación | 2021-12-27 → 2022-02-02 (+37d) | 2021-12-29 → 2022-02-04 (+37d) |  | 0d → 1d |  | resources A2; D2; T1; DS1 → A2; D2; T1; DS1 [50%] |
| 36 | Elaborar Plan Pruebas Aceptación | 2021-11-09 → 2021-11-15 (+6d) | 2021-11-12 → 2021-11-18 (+6d) |  | 33.12d → 3.05d | 37FF, 9SS+2% → 37FF, 9 |  |
| 37 | Peer Review de Requisitos | 2021-11-10 → 2021-11-16 (+6d) | 2021-11-12 → 2021-11-18 (+6d) |  | 0d → 3.05d |  |  |
| 38 | Diseño BBDD (diseño alto nivel) | 2021-11-12 → 2021-11-30 (+18d) | 2021-11-19 → 2021-12-07 (+18d) |  |  | 37 → 37, 7, 12 |  |

## Version 11 (saved 2024-10-14, file RecursosContinuaAdrianCaminoCrítico.mpp)

Last finish stays 2022-02-07.

Changed:

| ID | Task | Predecessors |
| --- | --- | --- |
| 14 | Elaborar Arquitectura (diseño de alto nivel) | 13, 7, 12 → 13, 7 |
| 15 | Diseño BBDD (diseño alto nivel) | 13, 7, 14 → 14 |
| 29 | Ejecutar Plan Pruebas Integración | 26, 25 → 26, 25, 28 |
| 31 | Ejecutar Plan Pruebas Sistema | 30 → 30, 27 |
| 35 | Ejecutar Plan Pruebas Aceptación | 34, 32 → 34, 32, 12 |

## Version 12 (saved 2024-10-29, file RecursosContinua.mpp)

Last finish 2022-02-07 → 2022-01-28 (-10d).

Removed: 32 Ejecutar Plan Purebas Sistema 2

Changed:

| ID | Task | Start | Finish | Duration | Total float | Predecessors | Other |
| --- | --- | --- | --- | --- | --- | --- | --- |
| 1 | **Adquisición** |  |  |  |  |  | baseline start none → 2021-11-02; baseline finish none → 2021-11-23 |
| 2 | Pedir Presupuestos |  |  |  |  |  | baseline start none → 2021-11-02; baseline finish none → 2021-11-02 |
| 3 | Analisis Presupuestos |  |  |  |  |  | resources D1; DS1 → D1; DS1; D2; baseline start none → 2021-11-11; baseline finish none → 2021-11-12 |
| 4 | Tramitar Compra |  |  |  |  |  | baseline start none → 2021-11-12; baseline finish none → 2021-11-12 |
| 5 | Comenzar Instalacion |  |  |  |  |  | baseline start none → 2021-11-17; baseline finish none → 2021-11-17 |
| 6 | Finalizar Instalación |  |  |  |  |  | baseline start none → 2021-11-23; baseline finish none → 2021-11-23 |
| 7 | Revisar Instalación |  |  |  |  |  | baseline start none → 2021-11-23; baseline finish none → 2021-11-23 |
| 8 | **Supervision Experto** |  | 2021-11-16 → 2021-11-15 (-1d) | 10.62d? → 10d? | 3.05d → 3.68d |  | baseline start none → 2021-11-02; baseline finish none → 2021-11-15 |
| 9 | Elaborar ERS1 |  | 2021-11-03 → 2021-11-04 (+1d) | 1.25d? → 2.5d? | 3.05d → 3.68d |  | baseline start none → 2021-11-02; baseline finish none → 2021-11-04 |
| 10 | Elaborar ERS2 | 2021-11-03 → 2021-11-04 (+1d) |  | 8.33d? → 7.5d? | 4.09d → 3.68d |  | resources A1 [60%]; A2 [60%] → A1 [50%]; A2 [50%]; baseline start none → 2021-11-04; baseline finish none → 2021-11-15 |
| 11 | Elaborar Doc. Usuario v1 | 2021-11-03 → 2021-11-04 (+1d) | 2021-11-16 → 2021-11-15 (-1d) | 9.38d? → 7.5d? | 3.05d → 3.68d |  | resources A1 [40%]; A2 [40%] → A1 [50%]; A2 [50%]; baseline start none → 2021-11-04; baseline finish none → 2021-11-15 |
| 12 | Elaborar Plan Pruebas Aceptación | 2021-11-15 → 2021-11-16 (+1d) |  |  | 49.68d → 43.64d | 13FF, 9 → 11 | baseline start none → 2021-11-16; baseline finish none → 2021-11-18 |
| 13 | Peer Review de Requisitos |  | 2021-11-18 → 2021-11-17 (-1d) |  | 3.05d → 3.68d |  | baseline start none → 2021-11-16; baseline finish none → 2021-11-17 |
| 14 | Elaborar Arquitectura (diseño de alto nivel) |  |  |  |  |  | baseline start none → 2021-11-23; baseline finish none → 2021-11-30 |
| 15 | Diseño BBDD (diseño alto nivel) |  |  |  |  |  | baseline start none → 2021-11-30; baseline finish none → 2021-12-07 |
| 16 | Detalle Componentes (diseño bajo nivel) |  |  |  |  | 15, 14 → 15 | baseline start none → 2021-12-07; baseline finish none → 2021-12-21 |
| 17 | Revisión Técnica del Diseño Software (RDS) |  |  |  |  | 15, 14, 16 → 16 | baseline start none → 2021-12-21; baseline finish none → 2021-12-23 |
| 18 | Elaborar Doc. Usuario v2 |  |  |  | 0d → 16.96d |  | baseline start none → 2021-12-23; baseline finish none → 2021-12-27 |
| 19 | **Supervisión Continua Desarrollo** | 2021-12-27 → 2021-12-23 (-4d) | 2022-01-11 → 2022-01-07 (-4d) |  |  |  | baseline start none → 2021-12-23; baseline finish none → 2022-01-07 |
| 20 | Implementar BBDD | 2021-12-27 → 2021-12-23 (-4d) | 2021-12-30 → 2021-12-28 (-2d) |  |  | 18 → 17 | baseline start none → 2021-12-23; baseline finish none → 2021-12-28 |
| 21 | Implementar Unidades 1 | 2021-12-27 → 2021-12-23 (-4d) | 2022-01-11 → 2022-01-07 (-4d) |  |  | 18 → 17 | baseline start none → 2021-12-23; baseline finish none → 2022-01-07 |
| 22 | Implementar Unidades 2 | 2021-12-30 → 2021-12-28 (-2d) | 2022-01-11 → 2022-01-07 (-4d) |  |  |  | baseline start none → 2021-12-28; baseline finish none → 2022-01-07 |
| 23 | Documentar Unidades 1 | 2021-12-27 → 2021-12-23 (-4d) | 2022-01-11 → 2022-01-07 (-4d) |  |  | 18, 21FF → 21FF, 17 | baseline start none → 2021-12-23; baseline finish none → 2022-01-07 |
| 24 | Documentar Unidades 2 | 2021-12-30 → 2021-12-28 (-2d) | 2022-01-11 → 2022-01-07 (-4d) |  |  |  | baseline start none → 2021-12-28; baseline finish none → 2022-01-07 |
| 25 | Ejecutar Pruebas de Unidad 1 | 2021-12-27 → 2021-12-23 (-4d) | 2022-01-11 → 2022-01-07 (-4d) |  |  | 18, 21FF, 23FF → 21FF, 23FF, 17 | baseline start none → 2021-12-23; baseline finish none → 2022-01-07 |
| 26 | Ejecutar Pruebas de Unidad 2 | 2021-12-30 → 2021-12-28 (-2d) | 2022-01-11 → 2022-01-07 (-4d) |  |  |  | baseline start none → 2021-12-28; baseline finish none → 2022-01-07 |
| 27 | Elaborar Plan Pruebas Sistema |  |  |  | 30.75d → 27.25d |  | baseline start none → 2021-12-02; baseline finish none → 2021-12-07 |
| 28 | Elaborar Plan Pruebas Integración |  |  |  | 15.25d → 14.75d |  | baseline start none → 2021-12-15; baseline finish none → 2021-12-21 |
| 29 | Ejecutar Plan Pruebas Integración | 2022-01-11 → 2022-01-07 (-4d) | 2022-01-14 → 2022-01-12 (-2d) |  | 0d → 1.5d |  | baseline start none → 2022-01-07; baseline finish none → 2022-01-12 |
| 30 | Preparar Paquete de Instalación | 2022-01-14 → 2022-01-07 (-7d) | 2022-01-19 → 2022-01-12 (-7d) |  |  | 29 → 26, 25 | baseline start none → 2022-01-07; baseline finish none → 2022-01-12 |
| 31 | Test de Usabilidad | 2022-01-19 → 2022-01-12 (-7d) | 2022-01-20 → 2022-01-13 (-7d) |  | 1.88d → 0d |  | resources T1 [50%]; T2 [50%] → T1; Servidor AWS [1%]; baseline start none → 2022-01-12; baseline finish none → 2022-01-13 |
| 32 | Ejecutar Plan Pruebas Sistema | 2022-01-19 → 2022-01-13 (-6d) | 2022-01-21 → 2022-01-19 (-2d) | 2d? → 3.71d |  | 30, 27 → 27, 29, 31 | resources T1 [50%]; T2 [50%] → Servidor AWS [1%]; T1; baseline start none → 2022-01-13; baseline finish none → 2022-01-19 |
| 33 | Elaborar Doc. Usuario v3 | 2022-01-24 → 2022-01-12 (-12d) | 2022-01-27 → 2022-01-17 (-10d) |  | 0d → 4.71d | 31, Ejecutar Plan Purebas Sistema 2 → 18, 30 | baseline start none → 2022-01-12; baseline finish none → 2022-01-17 |
| 34 | Ejecutar Plan Pruebas Aceptación | 2022-01-27 → 2022-01-19 (-8d) | 2022-02-01 → 2022-01-24 (-8d) |  |  | 33, Ejecutar Plan Purebas Sistema 2, 12 → 12, 32 | resources T1; T2 → T1; T2; Servidor AWS [1%]; baseline start none → 2022-01-19; baseline finish none → 2022-01-24 |
| 35 | Elaborar Plan Instalación & Formación | 2022-02-01 → 2022-01-24 (-8d) | 2022-02-02 → 2022-01-25 (-8d) |  |  | 34 → 34, 33 | resources DS1; A2; D2; T1 → DS1; A2; D2; T2; baseline start none → 2022-01-24; baseline finish none → 2022-01-25 |
| 36 | Formación | 2022-02-02 → 2022-01-25 (-8d) | 2022-02-04 → 2022-01-27 (-8d) |  |  |  | resources A2; D2; T1; DS1 [50%] → A2; D2; DS1 [50%]; T2; baseline start none → 2022-01-25; baseline finish none → 2022-01-27 |
| 37 | Instalación en Cliente | 2022-02-02 → 2022-01-25 (-8d) | 2022-02-07 → 2022-01-28 (-10d) |  |  |  | baseline start none → 2022-01-25; baseline finish none → 2022-01-28 |

## Version 13 (data date 2021-12-15, saved 2024-11-07, file DespuesDeSeguimineto.mpp)

Last finish stays 2022-01-28. Complete tasks 0 → 15.

Added:

| ID | Task | Duration | Start | Finish | Predecessors | Resources |
| --- | --- | --- | --- | --- | --- | --- |
| 14 | Correción ERS y Doc. Usuario | 1d | 2021-11-19 A | 2021-11-19 A | 13 | A1; A2 |

Changed:

| ID | Task | Start | Finish | Duration | Complete | Total float | Predecessors | Other |
| --- | --- | --- | --- | --- | --- | --- | --- | --- |
| 1 | **Adquisición** | 2021-11-02 A | 2021-11-23 → 2021-11-25 A (+2d) | 15.68d? → 17.55d? | 0% → 100% | 0d → none |  |  |
| 2 | Pedir Presupuestos | 2021-11-02 A | 2021-11-02 A |  | 0% → 100% | 0d → none |  |  |
| 3 | Analisis Presupuestos | 2021-11-11 A | 2021-11-12 A |  | 0% → 100% | 0d → none |  |  |
| 4 | Tramitar Compra | 2021-11-12 A | 2021-11-12 A |  | 0% → 100% | 0d → none |  |  |
| 5 | Comenzar Instalacion | 2021-11-17 A | 2021-11-17 A |  | 0% → 100% | 0d → none |  |  |
| 6 | Finalizar Instalación | 2021-11-23 → 2021-11-25 A (+2d) | 2021-11-23 → 2021-11-25 A (+2d) |  | 0% → 100% | 0d → none |  |  |
| 7 | Revisar Instalación | 2021-11-23 → 2021-11-25 A (+2d) | 2021-11-23 → 2021-11-25 A (+2d) |  | 0% → 100% | 0d → none |  |  |
| 8 | **Supervision Experto** | 2021-11-02 A | 2021-11-15 → 2021-11-16 A (+1d) | 10d? → 11d? | 0% → 100% | 3.68d → none |  |  |
| 9 | Elaborar ERS1 | 2021-11-02 A | 2021-11-04 A |  | 0% → 100% | 3.68d → none |  |  |
| 10 | Elaborar ERS2 | 2021-11-04 A | 2021-11-15 → 2021-11-16 A (+1d) | 7.5d? → 9d? | 0% → 100% | 3.68d → none |  |  |
| 11 | Elaborar Doc. Usuario v1 | 2021-11-04 A | 2021-11-15 → 2021-11-16 A (+1d) | 7.5d? → 9d? | 0% → 100% | 3.68d → none |  |  |
| 12 | Elaborar Plan Pruebas Aceptación | 2021-11-16 → 2021-11-17 A (+1d) | 2021-11-18 → 2021-11-23 A (+5d) | 3d? → 4d? | 0% → 100% | 43.64d → none |  |  |
| 13 | Peer Review de Requisitos | 2021-11-16 → 2021-11-17 A (+1d) | 2021-11-17 → 2021-11-18 A (+1d) |  | 0% → 100% | 3.68d → none |  |  |
| 15 | Elaborar Arquitectura (diseño de alto nivel) | 2021-11-23 → 2021-11-25 A (+2d) | 2021-11-30 → 2021-12-03 A (+3d) | 5d? → 5.62d? | 0% → 100% | 0d → none | 13, 7 → 7, 14 |  |
| 16 | Diseño BBDD (diseño alto nivel) | 2021-11-30 → 2021-12-03 A (+3d) | 2021-12-07 → 2021-12-09 A (+2d) | 5d? → 4.69d? | 0% → 100% | 0d → none |  |  |
| 17 | Detalle Componentes (diseño bajo nivel) | 2021-12-07 → 2021-12-09 A (+2d) | 2021-12-21 → 2021-12-23 (+2d) |  | 0% → 31% |  |  | resources D1; D2 → D1; D2; DS1 |
| 18 | Revisión Técnica del Diseño Software (RDS) | 2021-12-21 → 2021-12-23 (+2d) | 2021-12-23 → 2021-12-27 (+4d) |  |  |  |  |  |
| 19 | Elaborar Doc. Usuario v2 | 2021-12-23 → 2021-12-27 (+4d) | 2021-12-27 → 2021-12-29 (+2d) |  |  | 16.96d → 16.71d |  |  |
| 20 | **Supervisión Continua Desarrollo** | 2021-12-23 → 2021-12-27 (+4d) | 2022-01-07 → 2022-01-12 (+5d) |  |  |  |  |  |
| 21 | Implementar BBDD | 2021-12-23 → 2021-12-27 (+4d) | 2021-12-28 → 2021-12-30 (+2d) |  |  |  |  |  |
| 22 | Implementar Unidades 1 | 2021-12-23 → 2021-12-27 (+4d) | 2022-01-07 → 2022-01-12 (+5d) |  |  |  |  |  |
| 23 | Implementar Unidades 2 | 2021-12-28 → 2021-12-30 (+2d) | 2022-01-07 → 2022-01-12 (+5d) |  |  |  |  |  |
| 24 | Documentar Unidades 1 | 2021-12-23 → 2021-12-27 (+4d) | 2022-01-07 → 2022-01-12 (+5d) |  |  |  |  |  |
| 25 | Documentar Unidades 2 | 2021-12-28 → 2021-12-30 (+2d) | 2022-01-07 → 2022-01-12 (+5d) |  |  |  |  |  |
| 26 | Ejecutar Pruebas de Unidad 1 | 2021-12-23 → 2021-12-27 (+4d) | 2022-01-07 → 2022-01-12 (+5d) |  |  |  |  |  |
| 27 | Ejecutar Pruebas de Unidad 2 | 2021-12-28 → 2021-12-30 (+2d) | 2022-01-07 → 2022-01-12 (+5d) |  |  |  |  |  |
| 28 | Elaborar Plan Pruebas Sistema | 2021-12-02 → 2021-12-06 A (+4d) | 2021-12-07 → 2021-12-10 A (+3d) | 3d? → 4.86d? | 0% → 100% | 27.25d → none |  | constraint none → finish no earlier than 2021-12-10 |
| 29 | Elaborar Plan Pruebas Integración | 2021-12-15 → 2021-12-17 (+2d) | 2021-12-21 → 2021-12-23 (+2d) |  |  | 14.75d → 13.75d |  |  |
| 30 | Ejecutar Plan Pruebas Integración | 2022-01-07 → 2022-01-12 (+5d) | 2022-01-12 → 2022-01-14 (+2d) |  |  | 1.5d → 0.5d |  |  |
| 31 | Preparar Paquete de Instalación | 2022-01-07 → 2022-01-12 (+5d) | 2022-01-12 → 2022-01-17 (+5d) |  |  |  |  |  |
| 32 | Test de Usabilidad | 2022-01-12 → 2022-01-17 (+5d) | 2022-01-13 → 2022-01-18 (+5d) |  |  | 0d → 2.71d |  |  |
| 33 | Ejecutar Plan Pruebas Sistema | 2022-01-13 → 2022-01-17 (+4d) | 2022-01-19 → 2022-01-20 (+1d) |  |  |  | 28, 30, 32 → 28, 30, 31 | resources Servidor AWS [1%]; T1 → Servidor AWS [1%]; T2 |
| 34 | Elaborar Doc. Usuario v3 | 2022-01-12 → 2022-01-17 (+5d) | 2022-01-17 → 2022-01-18 (+1d) | 3d? → 1.5d? |  | 4.71d → 4.46d |  | resources DS1 → DS1; DS2 |
| 35 | Ejecutar Plan Pruebas Aceptación | 2022-01-19 → 2022-01-20 (+1d) | 2022-01-24 → 2022-01-25 (+1d) |  |  |  | 12, 33 → 33, 12, 30, 32 |  |
| 36 | Elaborar Plan Instalación & Formación | 2022-01-24 → 2022-01-18 (-6d) | 2022-01-25 → 2022-01-19 (-6d) |  |  | 0d → 4.46d | 35, 34 → 34 | resources DS1; A2; D2; T2 → DS1; A2; D2; T1 |
| 37 | Formación |  |  |  |  |  | 36 → 36, 35 |  |
| 38 | Instalación en Cliente |  |  |  |  |  | 36 → 36, 35 |  |

## Version 14 (data date 2021-12-15, saved 2024-11-11, file Cierre.mpp)

Last finish 2022-01-28 → 2022-02-10 (+13d). Complete tasks 15 → 36.

Added:

| ID | Task | Duration | Start | Finish | Constraint | Resources |
| --- | --- | --- | --- | --- | --- | --- |
| 21 | Subcontrata Implementacion BBDD | 0d? | 2022-01-04 A | 2022-01-04 A | start no earlier than 2022-01-04 |  |
| 22 | Entrega Implementacion BBDD | 0d? | 2022-01-10 A | 2022-01-10 A | start no earlier than 2022-01-10 | Implementacion BBDD |

Removed: 21 Implementar BBDD

Changed:

| ID | Task | Start | Finish | Duration | Complete | Total float | Predecessors | Other |
| --- | --- | --- | --- | --- | --- | --- | --- | --- |
| 17 | Detalle Componentes (diseño bajo nivel) |  | 2021-12-23 A |  | 31% → 100% | 0d → none |  |  |
| 18 | Revisión Técnica del Diseño Software (RDS) | 2021-12-23 A | 2021-12-27 → 2022-01-03 A (+7d) | 16h → 32h | 0% → 100% | 0d → none |  |  |
| 19 | Elaborar Doc. Usuario v2 | 2021-12-27 → 2022-01-04 A (+8d) | 2021-12-29 → 2022-01-05 A (+7d) |  | 0% → 100% | 16.71d → none |  |  |
| 20 | **Supervisión Continua Desarrollo** | 2021-12-27 → 2022-01-04 A (+8d) | 2022-01-12 → 2022-01-17 A (+5d) | 11.25d? → 10d? | 0% → 100% | 0d → none |  |  |
| 23 | Implementar Unidades 1 | 2021-12-27 → 2022-01-04 A (+8d) | 2022-01-12 → 2022-01-17 A (+5d) | 11.25d? → 10d? | 0% → 100% | 0d → none |  |  |
| 24 | Implementar Unidades 2 | 2021-12-30 → 2022-01-04 A (+5d) | 2022-01-12 → 2022-01-17 A (+5d) | 8.75d? → 10d? | 0% → 100% | 0d → none | Implementar BBDD → none | constraint none → start no earlier than 2022-01-04 |
| 25 | Documentar Unidades 1 | 2021-12-27 → 2022-01-04 A (+8d) | 2022-01-12 → 2022-01-17 A (+5d) | 11.25d? → 10d? | 0% → 100% | 0d → none |  |  |
| 26 | Documentar Unidades 2 | 2021-12-30 → 2022-01-04 A (+5d) | 2022-01-12 → 2022-01-17 A (+5d) | 8.75d? → 10d? | 0% → 100% | 0d → none | 24FF, Implementar BBDD → 24FF |  |
| 27 | Ejecutar Pruebas de Unidad 1 | 2021-12-27 → 2022-01-04 A (+8d) | 2022-01-12 → 2022-01-17 A (+5d) | 11.25d? → 10d? | 0% → 100% | 0d → none |  |  |
| 28 | Ejecutar Pruebas de Unidad 2 | 2021-12-30 → 2022-01-04 A (+5d) | 2022-01-12 → 2022-01-17 A (+5d) | 8.75d? → 10d? | 0% → 100% | 0d → none | 24FF, 26FF, Implementar BBDD → 24FF, 26FF |  |
| 30 | Elaborar Plan Pruebas Integración | 2021-12-17 A | 2021-12-23 A |  | 0% → 100% | 13.75d → none |  |  |
| 31 | Ejecutar Plan Pruebas Integración | 2022-01-12 → 2022-01-18 A (+6d) | 2022-01-14 → 2022-01-25 A (+11d) | 2.5d? → 4d? | 0% → 100% | 0.5d → none |  |  |
| 32 | Preparar Paquete de Instalación | 2022-01-12 → 2022-01-18 A (+6d) | 2022-01-17 → 2022-01-25 A (+8d) |  | 0% → 100% | 0d → none |  |  |
| 33 | Test de Usabilidad | 2022-01-17 → 2022-01-26 A (+9d) | 2022-01-18 → 2022-01-26 A (+8d) |  | 0% → 100% | 2.71d → none |  |  |
| 34 | Ejecutar Plan Pruebas Sistema | 2022-01-17 → 2022-01-26 A (+9d) | 2022-01-20 → 2022-01-31 A (+11d) |  | 0% → 100% | 0d → none |  |  |
| 35 | Elaborar Doc. Usuario v3 | 2022-01-17 → 2022-01-26 A (+9d) | 2022-01-18 → 2022-01-27 A (+9d) |  | 0% → 100% | 4.46d → none |  |  |
| 36 | Ejecutar Plan Pruebas Aceptación | 2022-01-20 → 2022-01-31 A (+11d) | 2022-01-25 → 2022-02-08 A (+14d) |  | 0% → 100% | 0d → none |  |  |
| 37 | Elaborar Plan Instalación & Formación | 2022-01-18 → 2022-01-27 A (+9d) | 2022-01-19 → 2022-01-28 A (+9d) |  | 0% → 100% | 4.46d → none |  |  |
| 38 | Formación | 2022-01-25 → 2022-02-08 A (+14d) | 2022-01-27 → 2022-02-10 A (+14d) |  | 0% → 100% | 1d → none |  | resources A2; D2; DS1 [50%]; T2 → Jefe de Proyecto |
| 39 | Instalación en Cliente | 2022-01-25 → 2022-02-08 A (+14d) | 2022-01-28 → 2022-02-10 A (+13d) | 3d? → 1.5d? | 0% → 100% | 0d → none |  | resources DS3; DS4; DS5; DS1 [50%]; DS2; Dietas [62.5%] → DS3; DS4; DS5; DS1; DS2; Dietas [62.5%] |

## Version 15 (data date 2021-12-15, saved 2024-11-11, file AntesDeSeguimineto.mpp)

Last finish 2022-02-10 → 2022-01-28 (-13d). Complete tasks 36 → 0.

Added:

| ID | Task | Duration | Start | Finish | Predecessors | Resources |
| --- | --- | --- | --- | --- | --- | --- |
| 20 | Implementar BBDD | 2.5d? | 2021-12-23 | 2021-12-28 | 17 | DS2; DS3 |

Removed: 14 Correción ERS y Doc. Usuario; 21 Subcontrata Implementacion BBDD; 22 Entrega Implementacion BBDD

Changed:

| ID | Task | Start | Finish | Duration | Complete | Total float | Predecessors | Other |
| --- | --- | --- | --- | --- | --- | --- | --- | --- |
| 1 | **Adquisición** | 2021-11-02 A → 2021-11-02 | 2021-11-25 A → 2021-11-23 (-2d) | 17.55d? → 15.68d? | 100% → 0% | none → 0d |  |  |
| 2 | Pedir Presupuestos | 2021-11-02 A → 2021-11-02 | 2021-11-02 A → 2021-11-02 |  | 100% → 0% | none → 0d |  |  |
| 3 | Analisis Presupuestos | 2021-11-11 A → 2021-11-11 | 2021-11-12 A → 2021-11-12 |  | 100% → 0% | none → 0d |  |  |
| 4 | Tramitar Compra | 2021-11-12 A → 2021-11-12 | 2021-11-12 A → 2021-11-12 |  | 100% → 0% | none → 0d |  |  |
| 5 | Comenzar Instalacion | 2021-11-17 A → 2021-11-17 | 2021-11-17 A → 2021-11-17 |  | 100% → 0% | none → 0d |  |  |
| 6 | Finalizar Instalación | 2021-11-25 A → 2021-11-23 (-2d) | 2021-11-25 A → 2021-11-23 (-2d) |  | 100% → 0% | none → 0d |  |  |
| 7 | Revisar Instalación | 2021-11-25 A → 2021-11-23 (-2d) | 2021-11-25 A → 2021-11-23 (-2d) |  | 100% → 0% | none → 0d |  |  |
| 8 | **Supervision Experto** | 2021-11-02 A → 2021-11-02 | 2021-11-16 A → 2021-11-15 (-1d) | 11d? → 10d? | 100% → 0% | none → 3.68d |  |  |
| 9 | Elaborar ERS1 | 2021-11-02 A → 2021-11-02 | 2021-11-04 A → 2021-11-04 |  | 100% → 0% | none → 3.68d |  |  |
| 10 | Elaborar ERS2 | 2021-11-04 A → 2021-11-04 | 2021-11-16 A → 2021-11-15 (-1d) | 9d? → 7.5d? | 100% → 0% | none → 3.68d |  |  |
| 11 | Elaborar Doc. Usuario v1 | 2021-11-04 A → 2021-11-04 | 2021-11-16 A → 2021-11-15 (-1d) | 9d? → 7.5d? | 100% → 0% | none → 3.68d |  |  |
| 12 | Elaborar Plan Pruebas Aceptación | 2021-11-17 A → 2021-11-16 (-1d) | 2021-11-23 A → 2021-11-18 (-5d) | 4d? → 3d? | 100% → 0% | none → 43.64d |  |  |
| 13 | Peer Review de Requisitos | 2021-11-17 A → 2021-11-16 (-1d) | 2021-11-18 A → 2021-11-17 (-1d) |  | 100% → 0% | none → 3.68d |  |  |
| 14 | Elaborar Arquitectura (diseño de alto nivel) | 2021-11-25 A → 2021-11-23 (-2d) | 2021-12-03 A → 2021-11-30 (-3d) | 5.62d? → 5d? | 100% → 0% | none → 0d | 7, Correción ERS y Doc. Usuario → 13, 7 |  |
| 15 | Diseño BBDD (diseño alto nivel) | 2021-12-03 A → 2021-11-30 (-3d) | 2021-12-09 A → 2021-12-07 (-2d) | 4.69d? → 5d? | 100% → 0% | none → 0d |  |  |
| 16 | Detalle Componentes (diseño bajo nivel) | 2021-12-09 A → 2021-12-07 (-2d) | 2021-12-23 A → 2021-12-21 (-2d) |  | 100% → 0% | none → 0d |  | resources D1; D2; DS1 → D1; D2 |
| 17 | Revisión Técnica del Diseño Software (RDS) | 2021-12-23 A → 2021-12-21 (-2d) | 2022-01-03 A → 2021-12-23 (-11d) | 32h → 16h | 100% → 0% | none → 0d |  |  |
| 18 | Elaborar Doc. Usuario v2 | 2022-01-04 A → 2021-12-23 (-12d) | 2022-01-05 A → 2021-12-27 (-9d) |  | 100% → 0% | none → 16.96d |  |  |
| 19 | **Supervisión Continua Desarrollo** | 2022-01-04 A → 2021-12-23 (-12d) | 2022-01-17 A → 2022-01-07 (-10d) | 10d? → 11.25d? | 100% → 0% | none → 0d |  |  |
| 21 | Implementar Unidades 1 | 2022-01-04 A → 2021-12-23 (-12d) | 2022-01-17 A → 2022-01-07 (-10d) | 10d? → 11.25d? | 100% → 0% | none → 0d |  |  |
| 22 | Implementar Unidades 2 | 2022-01-04 A → 2021-12-28 (-7d) | 2022-01-17 A → 2022-01-07 (-10d) | 10d? → 8.75d? | 100% → 0% | none → 0d | none → 20 | constraint start no earlier than 2022-01-04 → none |
| 23 | Documentar Unidades 1 | 2022-01-04 A → 2021-12-23 (-12d) | 2022-01-17 A → 2022-01-07 (-10d) | 10d? → 11.25d? | 100% → 0% | none → 0d |  |  |
| 24 | Documentar Unidades 2 | 2022-01-04 A → 2021-12-28 (-7d) | 2022-01-17 A → 2022-01-07 (-10d) | 10d? → 8.75d? | 100% → 0% | none → 0d | 22FF → 22FF, 20 |  |
| 25 | Ejecutar Pruebas de Unidad 1 | 2022-01-04 A → 2021-12-23 (-12d) | 2022-01-17 A → 2022-01-07 (-10d) | 10d? → 11.25d? | 100% → 0% | none → 0d |  |  |
| 26 | Ejecutar Pruebas de Unidad 2 | 2022-01-04 A → 2021-12-28 (-7d) | 2022-01-17 A → 2022-01-07 (-10d) | 10d? → 8.75d? | 100% → 0% | none → 0d | 22FF, 24FF → 22FF, 24FF, 20 |  |
| 27 | Elaborar Plan Pruebas Sistema | 2021-12-06 A → 2021-12-02 (-4d) | 2021-12-10 A → 2021-12-07 (-3d) | 4.86d? → 3d? | 100% → 0% | none → 27.25d |  | constraint finish no earlier than 2021-12-10 → none |
| 28 | Elaborar Plan Pruebas Integración | 2021-12-17 A → 2021-12-15 (-2d) | 2021-12-23 A → 2021-12-21 (-2d) |  | 100% → 0% | none → 14.75d |  |  |
| 29 | Ejecutar Plan Pruebas Integración | 2022-01-18 A → 2022-01-07 (-11d) | 2022-01-25 A → 2022-01-12 (-13d) | 4d? → 2.5d? | 100% → 0% | none → 1.5d |  |  |
| 30 | Preparar Paquete de Instalación | 2022-01-18 A → 2022-01-07 (-11d) | 2022-01-25 A → 2022-01-12 (-13d) |  | 100% → 0% | none → 0d |  |  |
| 31 | Test de Usabilidad | 2022-01-26 A → 2022-01-12 (-14d) | 2022-01-26 A → 2022-01-13 (-13d) |  | 100% → 0% | none → 0d |  |  |
| 32 | Ejecutar Plan Pruebas Sistema | 2022-01-26 A → 2022-01-13 (-13d) | 2022-01-31 A → 2022-01-19 (-12d) |  | 100% → 0% | none → 0d | 27, 29, 30 → 27, 29, 31 | resources Servidor AWS [1%]; T2 → Servidor AWS [1%]; T1 |
| 33 | Elaborar Doc. Usuario v3 | 2022-01-26 A → 2022-01-12 (-14d) | 2022-01-27 A → 2022-01-17 (-10d) | 1.5d? → 3d? | 100% → 0% | none → 4.71d |  | resources DS1; DS2 → DS1 |
| 34 | Ejecutar Plan Pruebas Aceptación | 2022-01-31 A → 2022-01-19 (-12d) | 2022-02-08 A → 2022-01-24 (-15d) |  | 100% → 0% | none → 0d | 32, 12, 29, 31 → 12, 32 |  |
| 35 | Elaborar Plan Instalación & Formación | 2022-01-27 A → 2022-01-24 (-3d) | 2022-01-28 A → 2022-01-25 (-3d) |  | 100% → 0% | none → 0d | 33 → 34, 33 | resources DS1; A2; D2; T1 → DS1; A2; D2; T2 |
| 36 | Formación | 2022-02-08 A → 2022-01-25 (-14d) | 2022-02-10 A → 2022-01-27 (-14d) |  | 100% → 0% | none → 1d | 35, 34 → 35 | resources Jefe de Proyecto → A2; D2; DS1 [50%]; T2 |
| 37 | Instalación en Cliente | 2022-02-08 A → 2022-01-25 (-14d) | 2022-02-10 A → 2022-01-28 (-13d) | 1.5d? → 3d? | 100% → 0% | none → 0d | 35, 34 → 35 | resources DS3; DS4; DS5; DS1; DS2; Dietas [62.5%] → DS3; DS4; DS5; DS1 [50%]; DS2; Dietas [62.5%] |
